# 2011 Trading System Project

Schedule from MS Project, 2011-03-01 to 2011-07-04, A marks actual dates.

## Calendars

- Standard: Mon-Fri 08:00-12:00, 13:00-17:00; Sat-Sun off.

## Resources

| Resource |
| --- |
| Vu Quoc Dung |
| Nguyen Hai Quan |

## Schedule

| ID | WBS | Task | Duration | Start | Finish | Predecessors | Complete | Remaining | Total slack | Free slack | Constraint | Resources | Work | Actual work |
| --- | --- | --- | --- | --- | --- | --- | --- | --- | --- | --- | --- | --- | --- | --- |
| 1 | 1 | **Product Development** | 60d? | 2011-03-01 A | 2011-05-23 |  | 55% | 27.02d? | 30d |  |  |  | 1048h | 688h |
| 2 | 1.1 | **Code study** | 27d | 2011-03-06 A | 2011-04-12 A |  | 100% |  |  |  |  |  | 168h | 168h |
| 3 | 1.1.1 | Chart study | 7d | 2011-03-06 A | 2011-03-15 A |  | 100% |  |  |  |  | Vu Quoc Dung | 56h | 56h |
| 4 | 1.1.2 | Ta-lib study | 7d | 2011-04-04 A | 2011-04-12 A |  | 100% |  |  |  |  | Vu Quoc Dung; Nguyen Hai Quan | 112h | 112h |
| 5 | 1.2 | Database design | 25d? | 2011-03-01 A | 2011-04-04 A |  | 100% |  |  |  | finish no earlier than 2011-04-04 | Vu Quoc Dung; Nguyen Hai Quan | 400h | 400h |
| 6 | 1.3 | Framework prototype | 21d | 2011-03-28 A | 2011-04-25 |  | 70% | 6.3d | 29d | 0d | start no earlier than 2011-03-28 |  |  |  |
| 7 | 1.4 | **Development** | 1d? | 2011-04-26 | 2011-04-26 | 6 |  |  | 49d |  |  |  |  |  |
| 8 | 1.4.1 | **Interface development** | 1d? | 2011-04-26 | 2011-04-26 |  |  |  | 49d |  |  |  |  |  |
| 9 | 1.4.1.1 | New chart | 1d? | 2011-04-26 | 2011-04-26 |  |  |  | 49d |  |  |  |  |  |
| 10 | 1.4.2 | Indicator development | 1d? | 2011-04-26 | 2011-04-26 |  |  |  | 49d |  |  |  |  |  |
| 11 | 1.4.3 | Stock ranking | 1d? | 2011-04-26 | 2011-04-26 |  |  |  | 49d |  |  |  |  |  |
| 12 | 1.4.4 | Strategy Ranking | 1d? | 2011-04-26 | 2011-04-26 |  |  |  | 49d |  |  |  |  |  |
| 13 | 1.4.5 | Data input | 1d? | 2011-04-26 | 2011-04-26 |  |  |  | 49d |  |  |  |  |  |
| 14 | 1.5 | Strategy Development | 60d | 2011-03-01 A | 2011-05-23 |  | 25% | 45d | 30d |  | start no earlier than 2011-03-01 | Nguyen Hai Quan | 480h | 120h |
| 16 | 2 | **Marketing** | 66d? | 2011-04-04 | 2011-07-04 |  |  |  | 0d |  |  |  | 24h |  |
| 17 | 2.1 | Meet finance analysts | 3d | 2011-06-30 | 2011-07-04 |  |  |  | 0d |  | start no earlier than 2011-06-30 | Nguyen Hai Quan | 24h |  |
| 18 | 2.2 | Securities report | 1d? | 2011-04-04 | 2011-04-04 |  |  |  | 65d |  |  |  |  |  |
| 19 | 2.3 | Customer Testing & Buzz | 1d? | 2011-04-04 | 2011-04-04 |  |  |  | 65d |  |  |  |  |  |

Notes:
- 5: V2 updated
