# Quantum 2012 Management v0.2 08242012

Schedule from MS Project, 2012-03-01 to 2013-04-22, status date 2012-06-02, 2 hours a day, costs in $, A marks actual dates.

## Calendars

- Standard: Mon-Fri 08:00-12:00, 13:00-17:00; Sat-Sun off. Exceptions (off unless hours are given): 2012-06-02 08:00-12:00, 13:00-17:00, 2012-08-25 08:00-12:00, 13:00-17:00.

## Resources

| Resource | Group | Rate |
| --- | --- | --- |
| Quan Nguyen | PM | 10 |
| Dung Vu | TA | 10 |
| Tuan Nguyen | DEV | 3 |
| Dat Nguyen | DEV | 1 |
| Huy | DEV | 1 |
| Duy Anh | DEV | 1 |
| Thuy | DEV | 1 |
| Duy |  | 1 |

## Schedule

| ID | WBS | Task | Duration | Start | Finish | Predecessors | Complete | Remaining | Baseline start | Baseline finish | Baseline duration | Total slack | Free slack | Constraint | Resources | Work | Actual work | Cost | Baseline cost | Actual cost |
| --- | --- | --- | --- | --- | --- | --- | --- | --- | --- | --- | --- | --- | --- | --- | --- | --- | --- | --- | --- | --- |
| 1 | 1 | **Quantum Desktop Version** | 1200d? | 2012-03-01 A | 2013-04-22 |  | 32% | 817.47d? | 2012-03-01 | 2012-12-17 | 840d? | 0d |  |  |  | 5898.8h | 591.09h | 14,614 | 6,937.6 | 7,834.4 |
| 3 | 1.1 | **Quantum version 2.0** | 1200d? | 2012-03-01 A | 2013-04-22 |  | 32% | 817.02d? | 2012-03-01 | 2012-12-17 | 840d? | 0d |  |  |  | 255.2h | 87.2h | 2,400.8 | 2,400.8 | 832.8 |
| 4 | 1.1.1 | Market Summary | 35d? | 2012-03-01 A | 2012-03-09 A |  | 100% |  | 2012-03-01 | 2012-03-09 | 35d? |  |  | finish no earlier than 2012-03-09 | Dung Vu; Tuan Nguyen [10%]; Quan Nguyen [40%] | 67.2h | 67.2h | 632.8 | 632.8 | 632.8 |
| 5 | 1.1.2 | Gán Strategy cho từng Stocks - liên quan đến Alerts | 64h | 2013-03-07 | 2013-03-25 | 4, 9, 27 |  |  | 2012-11-01 | 2012-11-19 | 64h | 3d | 0d |  | Quan Nguyen [50%]; Dung Vu | 48h |  | 480 | 480 |  |
| 6 | 1.1.3 | Custom Alerts | 96h | 2013-03-26 | 2013-04-22 | 5, 8 |  |  | 2012-11-20 | 2012-12-17 | 96h | 0d |  |  | Dung Vu; Quan Nguyen [50%] | 72h |  | 720 | 720 |  |
| 7 | 1.1.4 | Vẽ Chart Technical | 10d? | 2012-03-20 A | 2012-03-22 A | 6 | 100% |  | 2012-03-20 | 2012-03-22 | 10d? |  |  |  | Dung Vu | 20h | 20h | 200 | 200 | 200 |
| 8 | 1.1.5 | Stock Ranking - Mở rộng Category | 32h | 2013-03-07 | 2013-03-15 | 9, 27 |  |  | 2012-11-01 | 2012-11-09 | 32h | 27d | 24d |  | Dung Vu; Quan Nguyen; Tuan Nguyen | 48h |  | 368 | 368 |  |
| 9 | 1.2 | **Reporting & Email Module** | 757d? | 2012-06-18 A | 2013-03-07 |  | 16% | 639.41d? | 2012-06-18 | 2012-11-01 | 398d? | 3d | 0d |  |  | 5377.6h | 289.89h | 11,241.2 | 3,564.8 | 6,093.6 |
| 10 | 1.2.1 | **Analysis** | 393d? | 2012-08-29 A | 2013-01-14 |  | 86% | 56.14d? | 2012-08-29 | 2012-09-03 | 14d? | 3d |  |  | Dung Vu [20%]; Quan Nguyen [10%]; Thuy; Duy Anh; Tuan Nguyen [30%] | 2040.6h | 108.69h | 4,139.4 | 197.2 | 2,611.4 |
| 11 | 1.2.1.1 | Phân tích report thị trường | 20h | 2012-08-29 A | 2012-08-31 A |  | 100% |  | 2012-08-29 | 2012-08-31 | 20h |  |  | finish no earlier than 2012-08-31 | Duy Anh; Thuy | 40h | 40h | 40 | 40 | 40 |
| 12 | 1.2.1.2 | Phân tích report kỹ thuật | 1d? | 2012-09-03 A | 2012-09-03 A | 11 | 100% |  | 2012-09-03 | 2012-09-03 | 1d? |  |  |  | Duy Anh; Thuy | 4h | 4h | 4 | 4 | 4 |
| 13 | 1.2.1.3 | Tạo các hàm để viết report | 1d? | 2013-01-12 A | 2013-01-14 A | 12 | 100% |  | 2012-09-03 | 2012-09-03 | 1d? |  |  |  | Duy Anh; Thuy | 4h | 4h | 4 | 4 | 4 |
| 14 | 1.2.1.4 | Mapping hàm report và hàm Webservices | 1d? | 2013-01-14 | 2013-01-14 | 13 |  |  | 2012-09-03 | 2012-09-03 | 1d? | 3d | 0d |  | Duy Anh; Thuy | 4h |  | 4 | 4 |  |
| 15 | 1.2.1.5 | Reports dành cho từng nhà đầu tư | 1d? | 2013-01-14 | 2013-01-14 | 14 |  |  | 2012-09-03 | 2012-09-03 | 1d? | 3d | 0d |  |  |  |  |  |  |  |
| 16 | 1.2.2 | **Design** | 10d | 2013-01-14 | 2013-01-17 |  |  |  | 2012-09-04 | 2012-09-06 | 10d | 3d |  |  | Thuy; Duy Anh; Tuan Nguyen [30%]; Dung Vu [20%]; Quan Nguyen [10%] | 70.4h |  | 102 | 102 |  |
| 17 | 1.2.2.1 | Thiết kế lớp xử lý Data | 20h | 2013-01-14 | 2013-01-17 | 15 |  |  | 2012-09-04 | 2012-09-06 | 20h | 3d | 0d |  |  | 20h |  |  |  |  |
| 18 | 1.2.3 | **Implementation** | 519d? | 2012-09-06 A | 2013-03-07 |  | 13% | 454.12d? | 2012-09-06 | 2012-11-01 | 160d? | 3d |  |  | Thuy; Duy Anh; Tuan Nguyen [30%]; Dung Vu [20%]; Quan Nguyen [10%] | 3186.2h | 181.2h | 6,678.2 | 2,944 | 3,482.2 |
| 19 | 1.2.3.1 | Parse File ở cấu trúc docx/doc | 80h? | 2012-09-06 A | 2013-01-24 | 17 | 50% | 40h? | 2012-09-06 | 2012-09-20 | 80h? | 3d | 0d | start no earlier than 2012-08-25 | Duy Anh; Thuy | 160h | 80h | 160 | 160 | 80 |
| 20 | 1.2.3.2 | Truyền tham số sang cho Report Data | 80h | 2013-01-24 | 2013-02-07 | 19 |  |  | 2012-09-20 | 2012-10-04 | 80h | 3d | 0d | start no earlier than 2012-08-25 | Duy Anh; Thuy | 160h |  | 160 | 160 |  |
| 21 | 1.2.3.3 | Tạo file docx, sử dụng OpenXML | 80h? | 2013-02-07 | 2013-02-21 | 20 |  |  | 2012-10-04 | 2012-10-18 | 80h? | 3d | 0d | start no earlier than 2012-08-25 | Duy Anh; Thuy | 160h |  | 160 | 160 |  |
| 22 | 1.2.3.4 | Xây dựng Mapping | 80h? | 2013-02-21 | 2013-03-07 | 21 |  |  | 2012-10-18 | 2012-11-01 | 80h? | 3d |  | start no earlier than 2012-08-25 | Dung Vu | 80h |  | 800 | 800 |  |
| 23 | 1.2.4 | **Testing** | 12d | 2012-08-27 | 2012-08-29 |  |  |  | 2012-08-27 | 2012-08-29 | 12d | 176d |  |  | Thuy; Duy Anh; Tuan Nguyen [30%]; Dung Vu [20%]; Quan Nguyen [10%] | 60.4h |  | 121.6 | 121.6 |  |
| 24 | 1.2.4.1 | Integration test | 24h | 2012-08-27 | 2012-08-29 |  |  |  | 2012-08-27 | 2012-08-29 | 24h | 176d |  |  |  |  |  |  |  |  |
| 25 | 1.2.5 | Integration với code | 20h | 2012-06-18 | 2012-06-20 |  |  |  | 2012-06-18 | 2012-06-20 | 20h | 382d |  | start no earlier than 2012-06-18 | Dung Vu | 20h |  | 200 | 200 |  |

Notes:
- 1: Proorities Orientation / - Định hướng phát triển các hŕm quan trọng / - Phát triển trước các hŕm có ảnh hưởng đến độ cảm nhận của khách hŕng / - Sửa các lỗi quan trong
- 15: report nŕy thông báo hŕng ngŕy / Nhŕ đầu tư[TENNHADAUTU] / Danh sách cổ phiếu sở hữu [LIST OF STOCKS] / Các tín hiệu mua bán lŕ [SIGNAL FOR LIST]

| ID | WBS | Task | Type | Duration | Start | Finish | Complete | Remaining | Baseline start | Baseline finish | Baseline duration | Total slack | Free slack | Constraint | Deadline | Resources | Work | Actual work | Cost | Baseline cost | Actual cost |
| --- | --- | --- | --- | --- | --- | --- | --- | --- | --- | --- | --- | --- | --- | --- | --- | --- | --- | --- | --- | --- | --- |
| 27 | 1.3 | **Data Module** |  | 45d? | 2012-08-10 A | 2012-08-27 | 94% | 2.62d? | 2012-08-10 | 2012-08-27 | 45d? | 195d | 193d |  |  |  | 168h | 168h | 240 | 240 | 240 |
| 28 | 1.3.1 | Tổng kết về các Website | milestone | 0d? | 2012-08-24 A | 2012-08-24 A | 100% |  | 2012-08-24 | 2012-08-24 | 0d? |  |  | start no earlier than 2012-08-24 |  | Huy; Dat Nguyen; Quan Nguyen [10%]; Tuan Nguyen [10%]; Dung Vu [10%] |  |  |  |  |  |
| 29 | 1.3.2 | Đọc dữ liệu từ SSI |  | 40d? | 2012-08-10 A | 2012-08-24 A | 100% |  | 2012-08-10 | 2012-08-24 | 40d? |  |  | finish no earlier than 2012-08-24 |  | Dat Nguyen; Huy; Dung Vu [10%] | 168h | 168h | 240 | 240 | 240 |
| 30 | 1.3.3 | Tích hợp vào hệ thống |  | 1d? | 2012-08-27 A | 2012-08-27 | 50% | 0.5d? | 2012-08-27 | 2012-08-27 | 1d? | 195d |  |  |  |  |  |  |  |  |  |
| 31 | 1.3.4 | Document tổng hợp |  | 1d? | 2012-08-27 | 2012-08-27 |  |  | 2012-08-27 | 2012-08-27 | 1d? | 195d |  |  |  |  |  |  |  |  |  |
| 32 | 1.3.5 | Tích hợp Kitco |  | 1d? | 2012-08-27 | 2012-08-27 |  |  | 2012-08-27 | 2012-08-27 | 1d? | 195d |  |  |  |  |  |  |  |  |  |
| 33 | 1.4 | **Bug fix** |  | 248d? | 2012-06-01 A | 2012-08-24 | 52% | 118.9d? | 2012-06-01 | 2012-08-24 | 248d? | 328d |  |  |  |  | 86h | 46h | 668 | 668 | 668 |
| 34 | 1.4.1 | XP/2003 installation |  | 28d? | 2012-06-01 A | 2012-06-08 | 29% | 20d? | 2012-06-01 | 2012-06-08 | 28d? | 548d |  | start no earlier than 2012-06-01 |  | Dung Vu | 56h | 16h | 560 | 560 | 560 |
| 35 | 1.4.2 | Data Correction for VNIndex |  | 13.71d? | 2012-06-12 A | 2012-06-15 A | 100% |  | 2012-06-12 | 2012-06-15 | 13.71d? |  |  | finish no earlier than 2012-06-15 |  | Dung Vu [9.4%]; Tuan Nguyen | 30h | 30h | 108 | 108 | 108 |
| 36 | 1.4.3 | Indicators và Chart | milestone | 0d? | 2012-08-24 | 2012-08-24 |  |  | 2012-08-24 | 2012-08-24 | 0d? | 328d |  | start no earlier than 2012-08-24 |  | Tuan Nguyen; Dung Vu |  |  |  |  |  |
| 38 | 1.5 | **Non Functional Requirement** |  | 237d? | 2012-06-06 | 2012-08-27 |  |  | 2012-06-06 | 2012-08-27 | 237d? | 319d |  |  |  |  | 12h |  | 64 | 64 |  |
| 39 | 1.5.1 | Webservices Optimisation |  | 4d? | 2012-06-06 | 2012-06-06 |  |  | 2012-06-06 | 2012-06-06 | 4d? | 552d |  | start no earlier than 2012-06-06 |  | Dung Vu [50%]; Tuan Nguyen | 12h |  | 64 | 64 |  |
| 40 | 1.5.2 | Database Optimisation |  | 1d? | 2012-08-27 | 2012-08-27 |  |  | 2012-08-27 | 2012-08-27 | 1d? | 59d |  |  |  |  |  |  |  |  |  |
| 42 | 2 | **Documentation** |  | 100d? | 2012-08-03 A | 2012-09-06 | 89% | 10.92d? | 2012-08-03 | 2012-09-06 | 100d? | 648d |  |  |  |  | 506h | 500h | 4,174.5 | 4,174.5 | 4,141.5 |
| 43 | 2.1 | Requirement for Quantum Desktop v1.6 |  | 81d | 2012-08-06 A | 2012-08-25 A | 100% |  | 2012-08-06 | 2012-08-25 | 81d |  |  | start no earlier than 2012-08-03 |  | Quan Nguyen [304.8%]; Dung Vu [50%]; Tuan Nguyen [50%] | 256h | 256h | 2,112 | 2,112 | 2,112 |
| 44 | 2.2 | Requirement for Quantum Admin v0.6 |  | 0.5d? | 2012-08-27 A | 2012-08-27 A | 100% |  | 2012-08-27 | 2012-08-27 | 0.5d? |  |  |  |  | Quan Nguyen; Dung Vu [50%]; Tuan Nguyen [50%] | 2h | 2h | 16.5 | 16.5 | 16.5 |
| 45 | 2.3 | Quantum Database |  | 11d? | 2012-08-27 | 2012-09-06 |  |  | 2012-08-27 | 2012-09-06 | 11d? | 284d |  |  |  | Quan Nguyen [10%]; Dung Vu [50%]; Tuan Nguyen [50%] | 4h |  | 33 | 33 |  |
| 46 | 2.4 | Quantum Architecture |  | 1.5d? | 2012-08-27 A | 2012-08-27 | 33% | 1d? | 2012-08-27 | 2012-08-27 | 1.5d? | 316d |  |  |  | Quan Nguyen; Dung Vu [50%]; Tuan Nguyen [50%] | 4h | 2h | 33 | 33 | 33 |
| 47 | 2.5 | Quantum User Guide Tieng Viet |  | 42h | 2012-08-20 A | 2012-08-25 A | 100% |  | 2012-08-20 | 2012-08-25 | 42h |  |  | must finish on 2012-08-25 | 2012-08-27 | Quan Nguyen [400%]; Dung Vu [50%]; Tuan Nguyen [50%] | 80h | 80h | 660 | 660 | 660 |
| 48 | 2.6 | Quantum User Guide English 1.5 |  | 104h | 2012-08-03 A | 2012-08-17 A | 100% |  | 2012-08-03 | 2012-08-17 | 104h |  |  | finish no earlier than 2012-08-24 |  | Quan Nguyen [333.3%]; Dung Vu [50%]; Tuan Nguyen [50%] | 160h | 160h | 1,320 | 1,320 | 1,320 |
| 49 | 2.7 | Comment trong các module |  | 1d? | 2012-08-27 | 2012-08-27 |  |  | 2012-08-27 | 2012-08-27 | 1d? | 79d |  |  |  |  |  |  |  |  |  |
| 50 | 2.8 | **Video hướng dẫn sử dụng/ hướng dẫn đầu tư** |  | 1d? | 2012-08-27 | 2012-08-27 |  |  | 2012-08-27 | 2012-08-27 | 1d? | 319d |  |  |  |  |  |  |  |  |  |
| 51 | 2.8.1 | Mức độ 1 |  | 1d? | 2012-08-27 | 2012-08-27 |  |  | 2012-08-27 | 2012-08-27 | 1d? | 79d |  |  |  |  |  |  |  |  |  |
| 52 | 2.8.2 | Mức độ 2 |  | 1d? | 2012-08-27 | 2012-08-27 |  |  | 2012-08-27 | 2012-08-27 | 1d? | 79d |  |  |  |  |  |  |  |  |  |
| 53 | 2.8.3 | Mức độ 3 |  | 1d? | 2012-08-27 | 2012-08-27 |  |  | 2012-08-27 | 2012-08-27 | 1d? | 79d |  |  |  |  |  |  |  |  |  |

Notes:
- 34: sẽ để sau
- 48: Quantum 2012 User Guide v1.4 23082012

| ID | WBS | Task | Type | Duration | Start | Finish | Predecessors | Complete | Remaining | Baseline start | Baseline finish | Baseline duration | Total slack | Free slack | Constraint | Resources | Work | Actual work | Cost | Baseline cost | Actual cost |
| --- | --- | --- | --- | --- | --- | --- | --- | --- | --- | --- | --- | --- | --- | --- | --- | --- | --- | --- | --- | --- | --- |
| 55 | 2.9 | **Branding activities** |  | 1d? | 2012-08-27 | 2012-08-27 |  |  |  | 2012-08-27 | 2012-08-27 | 1d? | 319d |  |  |  |  |  |  |  |  |
| 56 | 2.9.1 | Logo |  | 1d? | 2012-08-27 | 2012-08-27 |  |  |  | 2012-08-27 | 2012-08-27 | 1d? | 319d |  |  |  |  |  |  |  |  |
| 57 | 2.9.2 | Bao bì phần mềm |  | 1d? | 2012-08-27 | 2012-08-27 |  |  |  | 2012-08-27 | 2012-08-27 | 1d? | 319d |  |  |  |  |  |  |  |  |
| 59 | 3 | **Quantum Web** |  | 1d? | 2012-08-27 | 2012-08-27 |  |  |  | 2012-08-27 | 2012-08-27 | 1d? | 683d |  |  |  | 2.8h | 2.8h | 7.2 | 7.2 | 7.2 |
| 60 | 3.1 | **Web design by inside team** |  | 1d? | 2012-08-27 | 2012-08-27 |  |  |  | 2012-08-27 | 2012-08-27 | 1d? | 319d |  |  | Duy; Dung Vu [20%]; Tuan Nguyen [20%]; Quan Nguyen [20%] | 2.8h | 2.8h | 7.2 | 7.2 | 7.2 |
| 61 | 3.1.1 | Các chức năng trong phiên bản Web |  | 1d? | 2012-08-27 | 2012-08-27 |  |  |  | 2012-08-27 | 2012-08-27 | 1d? | 79d |  |  |  |  |  |  |  |  |
| 62 | 3.1.2 | Thiết kế màn hình Login/My Profile |  | 1d? | 2012-08-27 | 2012-08-27 |  |  |  | 2012-08-27 | 2012-08-27 | 1d? | 79d |  |  |  |  |  |  |  |  |
| 63 | 3.1.3 | Thiết kế màn hình chính |  | 1d? | 2012-08-27 | 2012-08-27 |  |  |  | 2012-08-27 | 2012-08-27 | 1d? | 319d | 0d |  |  |  |  |  |  |  |
| 64 | 3.1.4 | Thiết kế màn hình tư vấn |  | 1d? | 2012-08-27 | 2012-08-27 |  |  |  | 2012-08-27 | 2012-08-27 | 1d? | 79d |  |  |  |  |  |  |  |  |
| 65 | 3.1.5 | Thiết kế màn hình theo dõi Chart |  | 1d? | 2012-08-27 | 2012-08-27 |  |  |  | 2012-08-27 | 2012-08-27 | 1d? | 79d |  |  |  |  |  |  |  |  |
| 66 | 3.2 | Web approved by PM | milestone | 0d | 2012-08-27 | 2012-08-27 | 63 |  |  | 2012-08-27 | 2012-08-27 | 0d | 319d |  | start no earlier than 2012-06-06 | Dung Vu; Quan Nguyen; Tuan Nguyen |  |  |  |  |  |
| 68 | 4 | **Quantum Mobile (iOS, Android)** |  | 4d? | 2012-09-03 A | 2012-09-03 |  | 10% | 3.6d? | 2012-09-03 | 2012-09-03 | 4d? | 296d |  |  |  |  |  |  |  |  |
| 69 | 4.1 | Quantum Mobile draft design |  | 4d? | 2012-09-03 A | 2012-09-03 |  | 20% | 3.2d? | 2012-09-03 | 2012-09-03 | 4d? | 296d |  | start no earlier than 2012-09-03 |  |  |  |  |  |  |
| 70 | 4.2 | I phone approved by PM |  | 4d? | 2012-09-03 | 2012-09-03 |  |  |  | 2012-09-03 | 2012-09-03 | 4d? | 56d |  | start no earlier than 2012-09-03 |  |  |  |  |  |  |
